Schedule from MS Project XML, 2025-12-15 to 2026-09-03, 13 hours a day.

## Calendars

- Calendario 1: Mon-Sat 07:00-12:00, 13:00-21:00; Sun off. Exceptions (off unless hours are given): 2025-12-24 to 2026-01-04, 2026-01-12, 2026-03-23, 2026-04-02 to 2026-04-04, 2026-05-01, 2026-05-18, 2026-06-08, 2026-06-15, 2026-06-29, 2026-07-20, 2026-08-07, 2026-08-17.
- DIAS CORRIDOS-100% LABORABLES: Mon-Sun 07:00-12:00, 13:00-21:00.

## Resources

| Resource |
| --- |
| No Asignado |
| Ayudante armado |
| Oficial armado |
| Ayudante acero |
| Oficial acero |
| Obra falsa |
| Cama |
| Formaleta columnas |
| DESC - Ayudante armado |
| DESC - Oficial armado |
| DESC - Ayudante hierro |
| DESC - Oficial hierro |
| DESC - Obra falsa |
| DESC - Cama |
| DESC - Formaleta columna |

## Schedule

| ID | WBS | Task | Type | Duration | Start | Finish | Predecessors | Constraint | Resources | Number4 | Number5 | Number6 | Number7 | Number8 |
| --- | --- | --- | --- | --- | --- | --- | --- | --- | --- | --- | --- | --- | --- | --- |
| 1 | 1 | **MOVILIZACION** |  | 35d | 2025-12-15 | 2026-02-06 |  |  |  | -161 | -161 | 53 | 1.73 |  |
| 2 | 1.1 | Recepción área de proyecto (con cerramiento) | milestone | 0d | 2025-12-15 | 2025-12-15 | 3SF |  |  |  |  | 0.42 |  |  |
| 3 | 1.2 | Movilización |  | 5d | 2025-12-15 | 2025-12-20 |  |  |  |  |  | 5 | 0.15 |  |
| 4 | 1.3 | Instalaciones provisionales |  | 30d | 2025-12-20 | 2026-02-06 | 3 |  |  |  |  | 48 | 1.73 | 0.16 |
| 5 | 2 | **PRELIMINARES** |  | 34d | 2025-12-20 | 2026-02-11 |  |  |  | -161 | -161 | 54 | 1.93 | 0.16 |
| 6 | 2.1 | Prealistamiento de torregrúas |  | 10d | 2025-12-20 | 2026-01-13 | 3 | start no earlier than 2024-06-04 |  |  |  | 25 | 0.97 | 0.16 |
| 7 | 2.2 | Montaje torregrúas |  | 25d | 2026-01-13 | 2026-02-11 | 6 |  |  |  |  | 29 | 1.93 | 0.99 |
| 8 | 3 | **EDIFICIO DESCENDENTE** |  | 16d | 2025-12-15 | 2026-01-15 |  |  |  |  |  | 31 | 1.01 |  |
| 9 | 3.1 | Inicio de obra Edificio 1 | milestone | 0d | 2026-01-15 | 2026-01-15 | 2FS+16d | start no earlier than 2025-12-01 |  |  |  | 0.42 | 1.01 | 1.01 |
| 10 | 3.2 | Inicio de obra Edificio 2 | milestone | 0d | 2025-12-15 | 2025-12-15 | 2 |  |  |  |  | 0.42 |  |  |
| 11 | 4 | **Localización y replanteo** |  | 186.4d | 2026-01-15 | 2026-09-03 | 9 |  |  |  |  | 231.68 | 8.62 | 1.02 |
| 12 | 4.1 | **CIMENTACIONES** |  | 99.4d | 2026-01-15 | 2026-05-16 |  |  |  |  |  | 121.68 | 5.01 | 1.02 |
| 13 | 4.1.1 | **Módulo 1.1** |  | 45.4d | 2026-01-15 | 2026-03-09 |  |  |  |  |  | 53.68 | 2.77 | 1.02 |
| 14 | 4.1.1.1 | Excavación |  | 12d | 2026-01-15 | 2026-01-29 | 9 |  | DESC - Ayudante armado [400%]; DESC - Oficial armado |  |  | 14 | 1.47 | 1.02 |
| 15 | 4.1.1.2 | Solado |  | 10d | 2026-01-19 | 2026-01-30 | 14FS-283920h |  | DESC - Ayudante armado [800%]; DESC - Oficial armado [300%] |  |  | 11.42 | 1.52 | 1.16 |
| 16 | 4.1.1.3 | Demolición pilotes |  | 18d | 2026-01-19 | 2026-02-09 | 14FS-283920h |  | DESC - Ayudante armado [800%] |  |  | 21.42 | 1.85 | 1.16 |
| 17 | 4.1.1.4 | Acero de refuerzo |  | 18d | 2026-01-23 | 2026-02-13 | 16FS-324480h |  | DESC - Ayudante hierro [1400%]; DESC - Oficial hierro [800%] |  |  | 21.42 | 1.98 | 1.29 |
| 18 | 4.1.1.5 | Encofrados |  | 14d | 2026-01-31 | 2026-02-17 | 17FS-243360h |  | DESC - Ayudante armado [1000%]; DESC - Oficial armado [400%] |  |  | 17.42 | 2.11 | 1.55 |
| 19 | 4.1.1.6 | Concreto |  | 1d | 2026-02-17 | 2026-02-18 | 18 |  | DESC - Ayudante hierro [1000%]; DESC - Oficial hierro [400%] |  |  | 1.42 | 2.15 | 2.11 |
| 20 | 4.1.1.7 | Desencofre |  | 12d | 2026-02-18 | 2026-03-04 | 19SS+1d |  | DESC - Ayudante armado [800%]; DESC - Oficial armado [300%] |  |  | 14.42 | 2.61 | 2.15 |
| 21 | 4.1.1.8 | Rellenos |  | 14d | 2026-02-20 | 2026-03-09 | 19SS+3d, 20SS+1d |  | DESC - Ayudante armado [800%]; DESC - Oficial armado [200%] |  |  | 17.42 | 2.77 | 2.21 |
| 22 | 4.1.2 | **Módulo 1.2** |  | 51.4d | 2026-01-29 | 2026-03-31 |  |  |  | -228.83 | -228.83 | 61.68 | 3.49 | 1.48 |
| 23 | 4.1.2.1 | Excavación |  | 12d | 2026-01-29 | 2026-02-11 | 14 | finish no earlier than 2025-06-20 | DESC - Ayudante armado [400%]; DESC - Oficial armado |  |  | 14 | 1.93 | 1.48 |
| 24 | 4.1.2.2 | Solado |  | 10d | 2026-02-02 | 2026-02-13 | 23FS-283920h, 15 | finish no earlier than 2025-06-21 | DESC - Ayudante armado [800%]; DESC - Oficial armado [300%] |  |  | 11.42 | 1.98 | 1.62 |
| 25 | 4.1.2.3 | Demolición pilotes |  | 18d | 2026-02-09 | 2026-03-02 | 23FS-283920h, 16 | finish no earlier than 2025-07-03 | DESC - Ayudante armado [800%] |  |  | 21.42 | 2.54 | 1.85 |
| 26 | 4.1.2.4 | Acero de refuerzo |  | 18d | 2026-02-13 | 2026-03-06 | 25FS-324480h, 17 | finish no earlier than 2025-07-07 | DESC - Ayudante hierro [1400%]; DESC - Oficial hierro [800%] |  |  | 21.42 | 2.67 | 1.98 |
| 27 | 4.1.2.5 | Encofrados |  | 14d | 2026-02-21 | 2026-03-10 | 26FS-243360h, 18 | finish no earlier than 2025-07-10 | DESC - Ayudante armado [1000%]; DESC - Oficial armado [400%] |  |  | 17.42 | 2.8 | 2.24 |
| 28 | 4.1.2.6 | Concreto |  | 1d | 2026-03-10 | 2026-03-11 | 27, 19 | start no earlier than 2025-07-03 | DESC - Ayudante hierro [1000%]; DESC - Oficial hierro [400%] |  |  | 1.42 | 2.84 | 2.8 |
| 29 | 4.1.2.7 | Desencofre |  | 12d | 2026-03-11 | 2026-03-26 | 28SS+1d, 20 | finish no earlier than 2025-07-17 | DESC - Ayudante armado [800%]; DESC - Oficial armado [300%] |  |  | 15.42 | 3.33 | 2.84 |
| 30 | 4.1.2.8 | Rellenos |  | 13d | 2026-03-13 | 2026-03-31 | 28SS+3d, 29SS+1d, 21 | finish no earlier than 2025-07-22 | DESC - Ayudante armado [800%]; DESC - Oficial armado [200%] |  |  | 18.42 | 3.49 | 2.9 |

| ID | WBS | Task | Duration | Start | Finish | Predecessors | Constraint | Calendar | Resources | Number4 | Number5 | Number6 | Number7 | Number8 |
| --- | --- | --- | --- | --- | --- | --- | --- | --- | --- | --- | --- | --- | --- | --- |
| 31 | 4.1.3 | **Módulo 1.3** | 81.4d | 2026-01-15 | 2026-04-24 |  |  |  |  | -228.83 | -228.83 | 99.68 | 4.28 | 1.02 |
| 32 | 4.1.3.1 | Excavación | 12d | 2026-01-15 | 2026-01-28 | 10 | finish no earlier than 2025-06-20 |  | DESC - Ayudante armado [400%]; DESC - Oficial armado |  |  | 14 | 1.47 | 1.02 |
| 33 | 4.1.3.2 | Solado | 10d | 2026-02-13 | 2026-02-25 | 32FS-283920h, 24 | finish no earlier than 2025-06-21 |  | DESC - Ayudante armado [800%]; DESC - Oficial armado [300%] |  |  | 12.42 | 2.38 | 1.98 |
| 34 | 4.1.3.3 | Demolición pilotes | 18d | 2026-03-02 | 2026-03-24 | 32FS-283920h, 25 | finish no earlier than 2025-07-03 |  | DESC - Ayudante armado [800%] |  |  | 22.42 | 3.27 | 2.54 |
| 35 | 4.1.3.4 | Acero de refuerzo | 18d | 2026-03-06 | 2026-03-28 | 34FS-324480h, 26 | finish no earlier than 2025-07-07 |  | DESC - Ayudante hierro [1400%]; DESC - Oficial hierro [800%] |  |  | 22.42 | 3.39 | 2.67 |
| 36 | 4.1.3.5 | Encofrados | 13d | 2026-03-14 | 2026-04-01 | 35FS-243360h, 27 | finish no earlier than 2025-07-10 |  | DESC - Ayudante armado [1000%]; DESC - Oficial armado [400%] |  |  | 18.42 | 3.53 | 2.93 |
| 37 | 4.1.3.6 | Concreto | 1d | 2026-04-01 | 2026-04-06 | 36, 28 | start no earlier than 2025-07-03 |  | DESC - Ayudante hierro [1000%]; DESC - Oficial hierro [400%] |  |  | 5.42 | 3.69 | 3.53 |
| 38 | 4.1.3.7 | Desencofre | 12d | 2026-04-06 | 2026-04-20 | 37SS+1d, 29 | finish no earlier than 2025-07-17 |  | DESC - Ayudante armado [800%]; DESC - Oficial armado [300%] |  |  | 14.42 | 4.15 | 3.69 |
| 39 | 4.1.3.8 | Rellenos | 14d | 2026-04-08 | 2026-04-24 | 37SS+3d, 38SS+1d, 30 | finish no earlier than 2025-07-22 |  | DESC - Ayudante armado [800%]; DESC - Oficial armado [200%] |  |  | 16.42 | 4.28 | 3.76 |
| 40 | 4.1.4 | **Módulo 1.4** | 87.4d | 2026-01-29 | 2026-05-16 |  |  |  |  | -228.83 | -228.83 | 107.68 | 5.01 | 1.48 |
| 41 | 4.1.4.1 | Excavación | 12d | 2026-01-29 | 2026-02-11 | 32 | finish no earlier than 2025-06-20 |  | DESC - Ayudante armado [400%]; DESC - Oficial armado |  |  | 14 | 1.93 | 1.48 |
| 42 | 4.1.4.2 | Solado | 10d | 2026-02-25 | 2026-03-09 | 41FS-283920h, 33 | finish no earlier than 2025-06-21 |  | DESC - Ayudante armado [800%]; DESC - Oficial armado [300%] |  |  | 12.42 | 2.77 | 2.38 |
| 43 | 4.1.4.3 | Demolición pilotes | 18d | 2026-03-24 | 2026-04-17 | 41FS-283920h, 34 | finish no earlier than 2025-07-03 |  | DESC - Ayudante armado [800%] |  |  | 24.42 | 4.06 | 3.27 |
| 44 | 4.1.4.4 | Acero de refuerzo | 15d | 2026-03-28 | 2026-04-22 | 43FS-324480h, 35 | finish no earlier than 2025-07-07 |  | DESC - Ayudante hierro [1400%]; DESC - Oficial hierro [800%] |  |  | 25.42 | 4.21 | 3.39 |
| 45 | 4.1.4.5 | Encofrados | 14d | 2026-04-09 | 2026-04-25 | 44FS-243360h, 36 | finish no earlier than 2025-07-10 |  | DESC - Ayudante armado [1000%]; DESC - Oficial armado [400%] |  |  | 16.42 | 4.32 | 3.79 |
| 46 | 4.1.4.6 | Concreto | 1d | 2026-04-25 | 2026-04-27 | 45, 37 | start no earlier than 2025-07-03 |  | DESC - Ayudante hierro [1000%]; DESC - Oficial hierro [400%] |  |  | 2.42 | 4.38 | 4.32 |
| 47 | 4.1.4.7 | Desencofre | 11d | 2026-04-27 | 2026-05-12 | 46SS+1d, 38 | finish no earlier than 2025-07-17 |  | DESC - Ayudante armado [800%]; DESC - Oficial armado [300%] |  |  | 15.42 | 4.87 | 4.38 |
| 48 | 4.1.4.8 | Rellenos | 13d | 2026-04-29 | 2026-05-16 | 46SS+3d, 47SS+1d, 39 | finish no earlier than 2025-07-22 |  | DESC - Ayudante armado [800%]; DESC - Oficial armado [200%] |  |  | 17.42 | 5.01 | 4.45 |
| 49 | 4.2 | **ESTRUCTURA EN CONCRETO** | 157d | 2026-02-18 | 2026-09-03 |  |  |  |  |  |  | 197.42 | 8.62 | 2.15 |
| 50 | 4.2.1 | **Losa P2** | 120.9d | 2026-02-18 | 2026-07-21 |  |  |  |  |  |  | 153.32 | 7.17 | 2.15 |
| 51 | 4.2.1.1 | **Módulo 1.1** | 64.6d | 2026-02-18 | 2026-05-09 |  |  |  |  | -154 | -154 | 80.74 | 4.79 | 2.15 |
| 52 | 4.2.1.1.1 | Columnas P1 a P2 | 14d | 2026-02-18 | 2026-03-06 | 19 |  |  | DESC - Ayudante armado [600%]; DESC - Oficial armado [300%]; DESC - Ayudante hierro [600%]; DESC - Oficial hierro [300%]; DESC - Formaleta columna [400%] |  |  | 16.42 | 2.67 | 2.15 |
| 53 | 4.2.1.1.2 | **Losa aérea** | 55.6d | 2026-02-28 | 2026-05-09 |  |  |  |  | -93 | -93 | 70.74 | 4.79 | 2.47 |
| 54 | 4.2.1.1.2.1 | Obra falsa | 13d | 2026-02-28 | 2026-03-16 | 21FS-202800h, 52FS-324480h |  |  | DESC - Ayudante armado [600%]; DESC - Oficial armado [300%] |  |  | 16.42 | 3 | 2.47 |
| 55 | 4.2.1.1.2.2 | Cama | 10d | 2026-03-06 | 2026-03-18 | 54FS-243360h |  |  | DESC - Ayudante armado [600%]; DESC - Oficial armado [300%] |  |  | 12.42 | 3.07 | 2.68 |
| 56 | 4.2.1.1.2.3 | Acero | 9d | 2026-03-11 | 2026-03-21 | 55FS-243360h |  |  | DESC - Ayudante hierro [1000%]; DESC - Oficial hierro [600%] |  |  | 10.42 | 3.17 | 2.84 |
| 57 | 4.2.1.1.2.4 | Aligerante | 8d | 2026-03-14 | 2026-03-25 | 56FS-283920h |  |  | DESC - Ayudante armado [800%]; DESC - Oficial armado [400%] |  |  | 11.42 | 3.29 | 2.93 |
| 58 | 4.2.1.1.2.5 | Concreto | 1d | 2026-03-25 | 2026-03-26 | 57 |  |  | DESC - Ayudante armado [1000%]; DESC - Oficial armado [400%] |  |  | 1.42 | 3.33 | 3.29 |
| 59 | 4.2.1.1.2.6 | Fraguado | 7d | 2026-03-26 | 2026-04-02 | 58 |  | DIAS CORRIDOS-100% LABORABLES |  |  |  | 7.42 | 3.56 | 3.33 |
| 60 | 4.2.1.1.2.7 | Desencofrado | 7d | 2026-04-06 | 2026-04-13 | 59 |  |  | DESC - Ayudante armado [600%]; DESC - Oficial armado [200%] |  |  | 8 | 3.93 | 3.68 |
| 61 | 4.2.1.1.2.8 | Equipo de obra falsa | 30d | 2026-02-28 | 2026-04-14 | 54SS |  |  | DESC - Obra falsa [832920%]; DESC - Cama [126200%] |  |  | 45.42 | 3.95 | 2.47 |
| 62 | 4.2.1.1.2.9 | Retaque | 22d | 2026-04-14 | 2026-05-09 | 60 |  |  | DESC - Obra falsa [166584%] |  |  | 26 | 4.79 | 3.95 |

| ID | WBS | Task | Duration | Start | Finish | Predecessors | Calendar | Resources | Number4 | Number5 | Number6 | Number7 | Number8 |
| --- | --- | --- | --- | --- | --- | --- | --- | --- | --- | --- | --- | --- | --- |
| 63 | 4.2.1.2 | **Módulo 1.2** | 67.9d | 2026-03-11 | 2026-06-05 |  |  |  | -173.83 | -173.83 | 86.32 | 5.66 | 2.84 |
| 64 | 4.2.1.2.1 | Columnas P1 a P2 | 13d | 2026-03-11 | 2026-03-28 | 28, 52 |  | DESC - Ayudante armado [600%]; DESC - Oficial armado [300%]; DESC - Ayudante hierro [600%]; DESC - Oficial hierro [300%]; DESC - Formaleta columna [400%] |  |  | 17.42 | 3.39 | 2.84 |
| 65 | 4.2.1.2.2 | **Losa aérea** | 58.9d | 2026-03-21 | 2026-06-05 |  |  |  | -173.83 | -173.83 | 76.32 | 5.66 | 3.16 |
| 66 | 4.2.1.2.2.1 | Obra falsa | 9d | 2026-03-21 | 2026-04-10 | 64FS-324480h, 30FS-202800h, 54 |  | DESC - Ayudante armado [600%]; DESC - Oficial armado [300%] |  |  | 20.42 | 3.82 | 3.16 |
| 67 | 4.2.1.2.2.2 | Cama | 7d | 2026-03-28 | 2026-04-13 | 66FS-243360h, 55 |  | DESC - Ayudante armado [600%]; DESC - Oficial armado [300%] |  |  | 16.42 | 3.92 | 3.4 |
| 68 | 4.2.1.2.2.3 | Acero | 9d | 2026-04-06 | 2026-04-16 | 67FS-243360h, 56 |  | DESC - Ayudante hierro [1000%]; DESC - Oficial hierro [600%] |  |  | 10.42 | 4.02 | 3.69 |
| 69 | 4.2.1.2.2.4 | Aligerante | 10d | 2026-04-09 | 2026-04-21 | 68FS-283920h, 57 |  | DESC - Ayudante armado [800%]; DESC - Oficial armado [400%] |  |  | 12.42 | 4.18 | 3.79 |
| 70 | 4.2.1.2.2.5 | Concreto | 1d | 2026-04-21 | 2026-04-22 | 69, 58 |  | DESC - Ayudante armado [1000%]; DESC - Oficial armado [400%] |  |  | 1.42 | 4.21 | 4.18 |
| 71 | 4.2.1.2.2.6 | Fraguado | 7d | 2026-04-22 | 2026-04-29 | 70 | DIAS CORRIDOS-100% LABORABLES |  |  |  | 7.42 | 4.44 | 4.21 |
| 72 | 4.2.1.2.2.7 | Desencofrado | 6d | 2026-04-29 | 2026-05-08 | 71, 60 |  | DESC - Ayudante armado [600%]; DESC - Oficial armado [200%] |  |  | 9.42 | 4.74 | 4.44 |
| 73 | 4.2.1.2.2.8 | Equipo de obra falsa | 30d | 2026-03-21 | 2026-05-06 | 66SS |  | DESC - Obra falsa [832920%]; DESC - Cama [126200%] |  |  | 46.42 | 4.68 | 3.16 |
| 74 | 4.2.1.2.2.9 | Retaque | 23d | 2026-05-08 | 2026-06-05 | 72 |  | DESC - Obra falsa [166584%] |  |  | 28.42 | 5.66 | 4.74 |
| 75 | 4.2.1.3 | **Módulo 1.3** | 66.9d | 2026-04-06 | 2026-06-27 |  |  |  | -173.83 | -173.83 | 82.32 | 6.38 | 3.69 |
| 76 | 4.2.1.3.1 | Columnas P1 a P2 | 14d | 2026-04-06 | 2026-04-22 | 37, 64 |  | DESC - Ayudante armado [600%]; DESC - Oficial armado [300%]; DESC - Ayudante hierro [600%]; DESC - Oficial hierro [300%]; DESC - Formaleta columna [400%] |  |  | 16.42 | 4.22 | 3.69 |
| 77 | 4.2.1.3.2 | **Losa aérea** | 57.9d | 2026-04-16 | 2026-06-27 |  |  |  | -173.83 | -173.83 | 72.32 | 6.38 | 4.02 |
| 78 | 4.2.1.3.2.1 | Obra falsa | 13d | 2026-04-16 | 2026-05-02 | 76FS-324480h, 39FS-202800h, 66 |  | DESC - Ayudante armado [600%]; DESC - Oficial armado [300%] |  |  | 16.42 | 4.55 | 4.02 |
| 79 | 4.2.1.3.2.2 | Cama | 10d | 2026-04-22 | 2026-05-05 | 78FS-243360h, 67 |  | DESC - Ayudante armado [600%]; DESC - Oficial armado [300%] |  |  | 13.42 | 4.65 | 4.22 |
| 80 | 4.2.1.3.2.3 | Acero | 8d | 2026-04-27 | 2026-05-08 | 79FS-243360h, 68 |  | DESC - Ayudante hierro [1000%]; DESC - Oficial hierro [600%] |  |  | 11.42 | 4.75 | 4.38 |
| 81 | 4.2.1.3.2.4 | Aligerante | 9d | 2026-04-30 | 2026-05-13 | 80FS-283920h, 69 |  | DESC - Ayudante armado [800%]; DESC - Oficial armado [400%] |  |  | 13.42 | 4.9 | 4.48 |
| 82 | 4.2.1.3.2.5 | Concreto | 1d | 2026-05-13 | 2026-05-14 | 81, 70 |  | DESC - Ayudante armado [1000%]; DESC - Oficial armado [400%] |  |  | 1.42 | 4.94 | 4.9 |
| 83 | 4.2.1.3.2.6 | Fraguado | 7d | 2026-05-14 | 2026-05-21 | 82 | DIAS CORRIDOS-100% LABORABLES |  |  |  | 7.42 | 5.17 | 4.94 |
| 84 | 4.2.1.3.2.7 | Desencofrado | 7d | 2026-05-21 | 2026-05-29 | 83, 72 |  | DESC - Ayudante armado [600%]; DESC - Oficial armado [200%] |  |  | 8.42 | 5.43 | 5.17 |
| 85 | 4.2.1.3.2.8 | Equipo de obra falsa | 33d | 2026-04-16 | 2026-05-29 | 78SS |  | DESC - Obra falsa [518100%]; DESC - Cama [78500%] |  |  | 43.42 | 5.43 | 4.02 |
| 86 | 4.2.1.3.2.9 | Retaque | 23d | 2026-05-29 | 2026-06-27 | 84 |  | DESC - Obra falsa [103620%] |  |  | 29.42 | 6.38 | 5.43 |

| ID | WBS | Task | Duration | Start | Finish | Predecessors | Calendar | Resources | Number4 | Number5 | Number6 | Number7 | Number8 |
| --- | --- | --- | --- | --- | --- | --- | --- | --- | --- | --- | --- | --- | --- |
| 87 | 4.2.1.4 | **Módulo 1.4** | 66.9d | 2026-04-27 | 2026-07-21 |  |  |  | -173.83 | -173.83 | 85.32 | 7.17 | 4.38 |
| 88 | 4.2.1.4.1 | Columnas P1 a P2 | 13d | 2026-04-27 | 2026-05-14 | 46, 76 |  | DESC - Ayudante armado [600%]; DESC - Oficial armado [300%]; DESC - Ayudante hierro [600%]; DESC - Oficial hierro [300%]; DESC - Formaleta columna [400%] |  |  | 17.42 | 4.94 | 4.38 |
| 89 | 4.2.1.4.2 | **Losa aérea** | 57.9d | 2026-05-08 | 2026-07-21 |  |  |  | -173.83 | -173.83 | 74.32 | 7.17 | 4.74 |
| 90 | 4.2.1.4.2.1 | Obra falsa | 12d | 2026-05-08 | 2026-05-25 | 88FS-324480h, 48FS-202800h, 78 |  | DESC - Ayudante armado [600%]; DESC - Oficial armado [300%] |  |  | 17.42 | 5.3 | 4.74 |
| 91 | 4.2.1.4.2.2 | Cama | 9d | 2026-05-14 | 2026-05-27 | 90FS-243360h, 79 |  | DESC - Ayudante armado [600%]; DESC - Oficial armado [300%] |  |  | 13.42 | 5.37 | 4.94 |
| 92 | 4.2.1.4.2.3 | Acero | 9d | 2026-05-20 | 2026-05-30 | 91FS-243360h, 80 |  | DESC - Ayudante hierro [1000%]; DESC - Oficial hierro [600%] |  |  | 10.42 | 5.47 | 5.14 |
| 93 | 4.2.1.4.2.4 | Aligerante | 10d | 2026-05-23 | 2026-06-04 | 92FS-283920h, 81 |  | DESC - Ayudante armado [800%]; DESC - Oficial armado [400%] |  |  | 12.42 | 5.63 | 5.23 |
| 94 | 4.2.1.4.2.5 | Concreto | 1d | 2026-06-04 | 2026-06-05 | 93, 82 |  | DESC - Ayudante armado [1000%]; DESC - Oficial armado [400%] |  |  | 1.42 | 5.66 | 5.63 |
| 95 | 4.2.1.4.2.6 | Fraguado | 7d | 2026-06-05 | 2026-06-12 | 94 | DIAS CORRIDOS-100% LABORABLES |  |  |  | 7.42 | 5.89 | 5.66 |
| 96 | 4.2.1.4.2.7 | Desencofrado | 6d | 2026-06-12 | 2026-06-22 | 95, 84 |  | DESC - Ayudante armado [600%]; DESC - Oficial armado [200%] |  |  | 10.42 | 6.22 | 5.89 |
| 97 | 4.2.1.4.2.8 | Equipo de obra falsa | 33d | 2026-05-08 | 2026-06-22 | 90SS |  | DESC - Obra falsa [518100%]; DESC - Cama [78500%] |  |  | 45.42 | 6.22 | 4.74 |
| 98 | 4.2.1.4.2.9 | Retaque | 23d | 2026-06-22 | 2026-07-21 | 96 |  | DESC - Obra falsa [103620%] |  |  | 29.42 | 7.17 | 6.22 |
| 99 | 4.2.2 | **Losa P3** | 115.8d | 2026-03-26 | 2026-08-21 |  |  |  |  |  | 148.31 | 8.19 | 3.33 |
| 100 | 4.2.2.1 | **Módulo 1.1** | 61.8d | 2026-03-26 | 2026-06-13 |  |  |  | -154 | -154 | 79.31 | 5.92 | 3.33 |
| 101 | 4.2.2.1.1 | Columnas P2 a P3 | 11d | 2026-03-26 | 2026-04-15 | 58 |  | DESC - Ayudante armado [600%]; DESC - Oficial armado [300%]; DESC - Ayudante hierro [600%]; DESC - Oficial hierro [300%]; DESC - Formaleta columna [400%] |  |  | 20.42 | 3.98 | 3.33 |
| 102 | 4.2.2.1.2 | **Losa aérea** | 59d | 2026-03-30 | 2026-06-13 |  |  |  | -93 | -93 | 75.42 | 5.92 | 3.45 |
| 103 | 4.2.2.1.2.1 | Obra falsa | 15d | 2026-03-30 | 2026-04-23 | 101FS-324480h |  | DESC - Ayudante armado [600%]; DESC - Oficial armado [300%] |  |  | 24.42 | 4.24 | 3.45 |
| 104 | 4.2.2.1.2.2 | Cama | 14d | 2026-04-10 | 2026-04-27 | 103FS-243360h |  | DESC - Ayudante armado [600%]; DESC - Oficial armado [300%] |  |  | 17.42 | 4.38 | 3.82 |
| 105 | 4.2.2.1.2.3 | Acero | 14d | 2026-04-16 | 2026-05-04 | 104FS-243360h |  | DESC - Ayudante hierro [1000%]; DESC - Oficial hierro [600%] |  |  | 18.42 | 4.62 | 4.03 |
| 106 | 4.2.2.1.2.4 | Aligerante | 12d | 2026-04-22 | 2026-05-07 | 105FS-283920h |  | DESC - Ayudante armado [800%]; DESC - Oficial armado [400%] |  |  | 15.42 | 4.7 | 4.21 |
| 107 | 4.2.2.1.2.5 | Concreto | 1d | 2026-05-07 | 2026-05-08 | 106 |  | DESC - Ayudante armado [1000%]; DESC - Oficial armado [400%] |  |  | 1.42 | 4.74 | 4.7 |
| 108 | 4.2.2.1.2.6 | Fraguado | 7d | 2026-05-08 | 2026-05-15 | 107 | DIAS CORRIDOS-100% LABORABLES |  |  |  | 7.42 | 4.97 | 4.74 |
| 109 | 4.2.2.1.2.7 | Desencofrado | 6d | 2026-05-15 | 2026-05-25 | 108 |  | DESC - Ayudante armado [600%]; DESC - Oficial armado [200%] |  |  | 10.42 | 5.29 | 4.97 |
| 110 | 4.2.2.1.2.8 | Equipo de obra falsa | 36d | 2026-03-30 | 2026-05-21 | 103SS |  | DESC - Obra falsa [951548%]; DESC - Cama [126200%] |  |  | 52.42 | 5.16 | 3.45 |
| 111 | 4.2.2.1.2.9 | Retaque | 16d | 2026-05-25 | 2026-06-13 | 109 |  | DESC - Obra falsa [190310%] |  |  | 19.42 | 5.92 | 5.29 |

| ID | WBS | Task | Duration | Start | Finish | Predecessors | Calendar | Resources | Number4 | Number5 | Number6 | Number7 | Number8 |
| --- | --- | --- | --- | --- | --- | --- | --- | --- | --- | --- | --- | --- | --- |
| 112 | 4.2.2.2 | **Módulo 1.2** | 59.8d | 2026-04-22 | 2026-07-07 |  |  |  | -173.83 | -173.83 | 76.31 | 6.71 | 4.21 |
| 113 | 4.2.2.2.1 | Columnas P2 a P3 | 13d | 2026-04-22 | 2026-05-09 | 70, 101 |  | DESC - Ayudante armado [600%]; DESC - Oficial armado [300%]; DESC - Ayudante hierro [600%]; DESC - Oficial hierro [300%]; DESC - Formaleta columna |  |  | 17.42 | 4.77 | 4.21 |
| 114 | 4.2.2.2.2 | **Losa aérea** | 57d | 2026-04-25 | 2026-07-07 |  |  |  | -173.83 | -173.83 | 73.42 | 6.71 | 4.31 |
| 115 | 4.2.2.2.2.1 | Obra falsa | 17d | 2026-04-25 | 2026-05-19 | 113FS-324480h, 103 |  | DESC - Ayudante armado [600%]; DESC - Oficial armado [300%] |  |  | 24.42 | 5.1 | 4.31 |
| 116 | 4.2.2.2.2.2 | Cama | 13d | 2026-05-05 | 2026-05-22 | 115FS-243360h, 104 |  | DESC - Ayudante armado [600%]; DESC - Oficial armado [300%] |  |  | 17.42 | 5.2 | 4.64 |
| 117 | 4.2.2.2.2.3 | Acero | 13d | 2026-05-11 | 2026-05-28 | 116FS-243360h, 105 |  | DESC - Ayudante hierro [1000%]; DESC - Oficial hierro [600%] |  |  | 17.42 | 5.41 | 4.85 |
| 118 | 4.2.2.2.2.4 | Aligerante | 11d | 2026-05-16 | 2026-06-01 | 117FS-283920h, 106 |  | DESC - Ayudante armado [800%]; DESC - Oficial armado [400%] |  |  | 16.42 | 5.53 | 5 |
| 119 | 4.2.2.2.2.5 | Concreto | 1d | 2026-06-01 | 2026-06-02 | 118, 107 |  | DESC - Ayudante armado [1000%]; DESC - Oficial armado [400%] |  |  | 1.42 | 5.56 | 5.53 |
| 120 | 4.2.2.2.2.6 | Fraguado | 7d | 2026-06-02 | 2026-06-09 | 119 | DIAS CORRIDOS-100% LABORABLES |  |  |  | 7.42 | 5.79 | 5.56 |
| 121 | 4.2.2.2.2.7 | Desencofrado | 6d | 2026-06-09 | 2026-06-18 | 120, 109 |  | DESC - Ayudante armado [600%]; DESC - Oficial armado [200%] |  |  | 9.42 | 6.08 | 5.79 |
| 122 | 4.2.2.2.2.8 | Equipo de obra falsa | 35d | 2026-04-25 | 2026-06-11 | 115SS |  | DESC - Obra falsa [951548%]; DESC - Cama [126200%] |  |  | 47.42 | 5.85 | 4.31 |
| 123 | 4.2.2.2.2.9 | Retaque | 15d | 2026-06-18 | 2026-07-07 | 121 |  | DESC - Obra falsa [190310%] |  |  | 19.42 | 6.71 | 6.08 |
| 124 | 4.2.2.3 | **Módulo 1.3** | 59.8d | 2026-05-14 | 2026-07-29 |  |  |  | -173.83 | -173.83 | 76.31 | 7.43 | 4.94 |
| 125 | 4.2.2.3.1 | Columnas P2 a P3 | 13d | 2026-05-14 | 2026-06-01 | 82, 113 |  | DESC - Ayudante armado [600%]; DESC - Oficial armado [300%]; DESC - Ayudante hierro [600%]; DESC - Oficial hierro [300%]; DESC - Formaleta columna [400%] |  |  | 18.42 | 5.53 | 4.94 |
| 126 | 4.2.2.3.2 | **Losa aérea** | 57d | 2026-05-19 | 2026-07-29 |  |  |  | -173.83 | -173.83 | 71.42 | 7.43 | 5.1 |
| 127 | 4.2.2.3.2.1 | Obra falsa | 18d | 2026-05-19 | 2026-06-10 | 125FS-324480h, 115 |  | DESC - Ayudante armado [600%]; DESC - Oficial armado [300%] |  |  | 22.42 | 5.82 | 5.1 |
| 128 | 4.2.2.3.2.2 | Cama | 13d | 2026-05-27 | 2026-06-13 | 127FS-243360h, 116 |  | DESC - Ayudante armado [600%]; DESC - Oficial armado [300%] |  |  | 17.42 | 5.92 | 5.36 |
| 129 | 4.2.2.3.2.3 | Acero | 12d | 2026-06-02 | 2026-06-20 | 128FS-243360h, 117 |  | DESC - Ayudante hierro [1000%]; DESC - Oficial hierro [600%] |  |  | 18.42 | 6.17 | 5.57 |
| 130 | 4.2.2.3.2.4 | Aligerante | 11d | 2026-06-09 | 2026-06-24 | 129FS-283920h, 118 |  | DESC - Ayudante armado [800%]; DESC - Oficial armado [400%] |  |  | 15.42 | 6.28 | 5.79 |
| 131 | 4.2.2.3.2.5 | Concreto | 1d | 2026-06-24 | 2026-06-25 | 130, 119 |  | DESC - Ayudante armado [1000%]; DESC - Oficial armado [400%] |  |  | 1.42 | 6.31 | 6.28 |
| 132 | 4.2.2.3.2.6 | Fraguado | 7d | 2026-06-25 | 2026-07-02 | 131 | DIAS CORRIDOS-100% LABORABLES |  |  |  | 7.42 | 6.54 | 6.31 |
| 133 | 4.2.2.3.2.7 | Desencofrado | 7d | 2026-07-02 | 2026-07-10 | 132, 121 |  | DESC - Ayudante armado [600%]; DESC - Oficial armado [200%] |  |  | 8.42 | 6.81 | 6.54 |
| 134 | 4.2.2.3.2.8 | Equipo de obra falsa | 34d | 2026-05-19 | 2026-07-04 | 127SS |  | DESC - Obra falsa [591890%]; DESC - Cama [78500%] |  |  | 46.42 | 6.61 | 5.1 |
| 135 | 4.2.2.3.2.9 | Retaque | 15d | 2026-07-10 | 2026-07-29 | 133 |  | DESC - Obra falsa [118378%] |  |  | 19.42 | 7.43 | 6.81 |

| ID | WBS | Task | Duration | Start | Finish | Predecessors | Calendar | Resources | Number4 | Number5 | Number6 | Number7 | Number8 |
| --- | --- | --- | --- | --- | --- | --- | --- | --- | --- | --- | --- | --- | --- |
| 136 | 4.2.2.4 | **Módulo 1.4** | 59.8d | 2026-06-05 | 2026-08-21 |  |  |  | -173.83 | -173.83 | 77.31 | 8.19 | 5.66 |
| 137 | 4.2.2.4.1 | Columnas P2 a P3 | 12d | 2026-06-05 | 2026-06-24 | 94, 125 |  | DESC - Ayudante armado [600%]; DESC - Oficial armado [300%]; DESC - Ayudante hierro [600%]; DESC - Oficial hierro [300%]; DESC - Formaleta columna [400%] |  |  | 19.42 | 6.28 | 5.66 |
| 138 | 4.2.2.4.2 | **Losa aérea** | 57d | 2026-06-10 | 2026-08-21 |  |  |  | -173.83 | -173.83 | 72.42 | 8.19 | 5.82 |
| 139 | 4.2.2.4.2.1 | Obra falsa | 17d | 2026-06-10 | 2026-07-03 | 137FS-324480h, 127 |  | DESC - Ayudante armado [600%]; DESC - Oficial armado [300%] |  |  | 23.42 | 6.58 | 5.82 |
| 140 | 4.2.2.4.2.2 | Cama | 13d | 2026-06-19 | 2026-07-07 | 139FS-243360h, 128 |  | DESC - Ayudante armado [600%]; DESC - Oficial armado [300%] |  |  | 18.42 | 6.71 | 6.12 |
| 141 | 4.2.2.4.2.3 | Acero | 13d | 2026-06-25 | 2026-07-13 | 140FS-243360h, 129 |  | DESC - Ayudante hierro [1000%]; DESC - Oficial hierro [600%] |  |  | 18.42 | 6.92 | 6.33 |
| 142 | 4.2.2.4.2.4 | Aligerante | 12d | 2026-07-02 | 2026-07-16 | 141FS-283920h, 130 |  | DESC - Ayudante armado [800%]; DESC - Oficial armado [400%] |  |  | 14.42 | 7 | 6.54 |
| 143 | 4.2.2.4.2.5 | Concreto | 1d | 2026-07-16 | 2026-07-17 | 142, 131 |  | DESC - Ayudante armado [1000%]; DESC - Oficial armado [400%] |  |  | 1.42 | 7.04 | 7 |
| 144 | 4.2.2.4.2.6 | Fraguado | 7d | 2026-07-17 | 2026-07-24 | 143 | DIAS CORRIDOS-100% LABORABLES |  |  |  | 7.42 | 7.27 | 7.04 |
| 145 | 4.2.2.4.2.7 | Desencofrado | 7d | 2026-07-24 | 2026-08-01 | 144, 133 |  | DESC - Ayudante armado [600%]; DESC - Oficial armado [200%] |  |  | 8.42 | 7.53 | 7.27 |
| 146 | 4.2.2.4.2.8 | Equipo de obra falsa | 34d | 2026-06-10 | 2026-07-27 | 139SS |  | DESC - Obra falsa [591890%]; DESC - Cama [78500%] |  |  | 47.42 | 7.37 | 5.82 |
| 147 | 4.2.2.4.2.9 | Retaque | 15d | 2026-08-01 | 2026-08-21 | 145 |  | DESC - Obra falsa [118378%] |  |  | 20.42 | 8.19 | 7.53 |
| 148 | 4.2.3 | **Losa P4** | 94.3d | 2026-05-08 | 2026-09-03 |  |  |  | -154 | -154 | 118.62 | 8.62 | 4.74 |
| 149 | 4.2.3.1 | **Módulo 1.1** | 38.6d | 2026-05-08 | 2026-06-25 |  |  |  | -154 | -154 | 48.78 | 6.33 | 4.74 |
| 150 | 4.2.3.1.1 | Columnas P3 a P4 | 12d | 2026-05-08 | 2026-05-23 | 107 |  | DESC - Ayudante armado [600%]; DESC - Oficial armado [300%]; DESC - Ayudante hierro [600%]; DESC - Oficial hierro [300%]; DESC - Formaleta columna [400%] |  |  | 15.42 | 5.23 | 4.74 |
| 151 | 4.2.3.1.2 | **Losa aérea** | 35d | 2026-05-12 | 2026-06-25 |  |  |  | -160.83 | -160.83 | 44.42 | 6.33 | 4.88 |
| 152 | 4.2.3.1.2.1 | Obra falsa | 11d | 2026-05-12 | 2026-05-27 | 150FS-283920h |  | DESC - Ayudante armado [600%]; DESC - Oficial armado [300%] |  |  | 15.42 | 5.37 | 4.88 |
| 153 | 4.2.3.1.2.2 | Cama | 10d | 2026-05-20 | 2026-06-01 | 152FS-202800h |  | DESC - Ayudante armado [600%]; DESC - Oficial armado [300%] |  |  | 12.42 | 5.54 | 5.14 |
| 154 | 4.2.3.1.2.3 | Acero | 9d | 2026-05-25 | 2026-06-04 | 153FS-243360h |  | DESC - Ayudante hierro [1000%]; DESC - Oficial hierro [600%] |  |  | 10.42 | 5.64 | 5.31 |
| 155 | 4.2.3.1.2.4 | Aligerante | 8d | 2026-05-28 | 2026-06-06 | 154FS-283920h |  | DESC - Ayudante armado [800%]; DESC - Oficial armado [400%] |  |  | 9.42 | 5.7 | 5.4 |
| 156 | 4.2.3.1.2.5 | Concreto | 1d | 2026-06-06 | 2026-06-09 | 155 |  | DESC - Ayudante armado [1000%]; DESC - Oficial armado [400%] |  |  | 3.42 | 5.79 | 5.7 |
| 157 | 4.2.3.1.2.6 | Fraguado | 7d | 2026-06-09 | 2026-06-16 | 156 | DIAS CORRIDOS-100% LABORABLES |  |  |  | 7.42 | 6.02 | 5.79 |
| 158 | 4.2.3.1.2.7 | Desencofrado | 7d | 2026-06-16 | 2026-06-24 | 157 |  | DESC - Ayudante armado [600%]; DESC - Oficial armado [200%] |  |  | 8.42 | 6.29 | 6.02 |
| 159 | 4.2.3.1.2.8 | Equipo de obra falsa | 32d | 2026-05-12 | 2026-06-25 | 152SS |  | DESC - Obra falsa [681480%]; DESC - Cama [126200%] |  |  | 44.42 | 6.33 | 4.88 |

| ID | WBS | Task | Duration | Start | Finish | Predecessors | Calendar | Resources | Number4 | Number5 | Number6 | Number7 | Number8 |
| --- | --- | --- | --- | --- | --- | --- | --- | --- | --- | --- | --- | --- | --- |
| 160 | 4.2.3.2 | **Módulo 1.2** | 38.6d | 2026-06-02 | 2026-07-21 |  |  |  | -173.83 | -173.83 | 49.78 | 7.18 | 5.56 |
| 161 | 4.2.3.2.1 | Columnas P3 a P4 | 11d | 2026-06-02 | 2026-06-18 | 119, 150 |  | DESC - Ayudante armado [600%]; DESC - Oficial armado [300%]; DESC - Ayudante hierro [600%]; DESC - Oficial hierro [300%]; DESC - Formaleta columna [400%] |  |  | 16.42 | 6.08 | 5.56 |
| 162 | 4.2.3.2.2 | **Losa aérea** | 35d | 2026-06-05 | 2026-07-21 |  |  |  | -173.83 | -173.83 | 46.42 | 7.18 | 5.67 |
| 163 | 4.2.3.2.2.1 | Obra falsa | 11d | 2026-06-05 | 2026-06-22 | 161FS-283920h, 152 |  | DESC - Ayudante armado [600%]; DESC - Oficial armado [300%] |  |  | 17.42 | 6.23 | 5.67 |
| 164 | 4.2.3.2.2.2 | Cama | 9d | 2026-06-13 | 2026-06-26 | 163FS-202800h, 153 |  | DESC - Ayudante armado [600%]; DESC - Oficial armado [300%] |  |  | 13.42 | 6.36 | 5.93 |
| 165 | 4.2.3.2.2.3 | Acero | 9d | 2026-06-19 | 2026-07-01 | 164FS-243360h, 154 |  | DESC - Ayudante hierro [1000%]; DESC - Oficial hierro [600%] |  |  | 12.42 | 6.52 | 6.13 |
| 166 | 4.2.3.2.2.4 | Aligerante | 7d | 2026-06-23 | 2026-07-03 | 165FS-283920h, 155 |  | DESC - Ayudante armado [800%]; DESC - Oficial armado [400%] |  |  | 10.42 | 6.58 | 6.26 |
| 167 | 4.2.3.2.2.5 | Concreto | 1d | 2026-07-03 | 2026-07-04 | 166, 156 |  | DESC - Ayudante armado [1000%]; DESC - Oficial armado [400%] |  |  | 1.42 | 6.62 | 6.58 |
| 168 | 4.2.3.2.2.6 | Fraguado | 7d | 2026-07-04 | 2026-07-11 | 167 | DIAS CORRIDOS-100% LABORABLES |  |  |  | 7.42 | 6.85 | 6.62 |
| 169 | 4.2.3.2.2.7 | Desencofrado | 7d | 2026-07-11 | 2026-07-21 | 168, 158 |  | DESC - Ayudante armado [600%]; DESC - Oficial armado [200%] |  |  | 10.42 | 7.18 | 6.85 |
| 170 | 4.2.3.2.2.8 | Equipo de obra falsa | 32d | 2026-06-05 | 2026-07-21 | 163SS |  | DESC - Obra falsa [681480%]; DESC - Cama [126200%] |  |  | 46.42 | 7.18 | 5.67 |
| 171 | 4.2.3.3 | **Módulo 1.3** | 38.6d | 2026-06-25 | 2026-08-12 |  |  |  | -173.83 | -173.83 | 48.78 | 7.9 | 6.31 |
| 172 | 4.2.3.3.1 | Columnas P3 a P4 | 11d | 2026-06-25 | 2026-07-10 | 131, 161 |  | DESC - Ayudante armado [600%]; DESC - Oficial armado [300%]; DESC - Ayudante hierro [600%]; DESC - Oficial hierro [300%]; DESC - Formaleta columna [400%] |  |  | 15.42 | 6.81 | 6.31 |
| 173 | 4.2.3.3.2 | **Losa aérea** | 35d | 2026-06-30 | 2026-08-12 |  |  |  | -173.83 | -173.83 | 43.42 | 7.9 | 6.49 |
| 174 | 4.2.3.3.2.1 | Obra falsa | 12d | 2026-06-30 | 2026-07-14 | 172FS-283920h, 163 |  | DESC - Ayudante armado [600%]; DESC - Oficial armado [300%] |  |  | 14.42 | 6.95 | 6.49 |
| 175 | 4.2.3.3.2.2 | Cama | 10d | 2026-07-07 | 2026-07-18 | 174FS-202800h, 164 |  | DESC - Ayudante armado [600%]; DESC - Oficial armado [300%] |  |  | 11.42 | 7.08 | 6.72 |
| 176 | 4.2.3.3.2.3 | Acero | 9d | 2026-07-11 | 2026-07-23 | 175FS-243360h, 165 |  | DESC - Ayudante hierro [1000%]; DESC - Oficial hierro [600%] |  |  | 12.42 | 7.25 | 6.85 |
| 177 | 4.2.3.3.2.4 | Aligerante | 7d | 2026-07-15 | 2026-07-25 | 176FS-283920h, 166 |  | DESC - Ayudante armado [800%]; DESC - Oficial armado [400%] |  |  | 10.42 | 7.31 | 6.98 |
| 178 | 4.2.3.3.2.5 | Concreto | 1d | 2026-07-25 | 2026-07-27 | 177, 167 |  | DESC - Ayudante armado [1000%]; DESC - Oficial armado [400%] |  |  | 2.42 | 7.37 | 7.31 |
| 179 | 4.2.3.3.2.6 | Fraguado | 7d | 2026-07-27 | 2026-08-03 | 178 | DIAS CORRIDOS-100% LABORABLES |  |  |  | 7.42 | 7.6 | 7.37 |
| 180 | 4.2.3.3.2.7 | Desencofrado | 6d | 2026-08-03 | 2026-08-12 | 179, 169 |  | DESC - Ayudante armado [600%]; DESC - Oficial armado [200%] |  |  | 9.42 | 7.9 | 7.6 |
| 181 | 4.2.3.3.2.8 | Equipo de obra falsa | 34d | 2026-06-30 | 2026-08-12 | 174SS |  | DESC - Obra falsa [423900%]; DESC - Cama [78500%] |  |  | 43.42 | 7.9 | 6.49 |
| 182 | 4.2.3.4 | **Módulo 1.4** | 38.3d | 2026-07-17 | 2026-09-03 |  |  |  | -173.83 | -173.83 | 48.62 | 8.62 | 7.04 |
| 183 | 4.2.3.4.1 | Columnas P3 a P4 | 11d | 2026-07-17 | 2026-08-01 | 143, 172 |  | DESC - Ayudante armado [600%]; DESC - Oficial armado [300%]; DESC - Ayudante hierro [600%]; DESC - Oficial hierro [300%]; DESC - Formaleta columna [400%] |  |  | 15.42 | 7.53 | 7.04 |

| ID | WBS | Task | Duration | Start | Finish | Predecessors | Calendar | Resources | Number4 | Number5 | Number6 | Number7 | Number8 |
| --- | --- | --- | --- | --- | --- | --- | --- | --- | --- | --- | --- | --- | --- |
| 184 | 4.2.3.4.2 | **Losa aérea** | 34.7d | 2026-07-22 | 2026-09-03 |  |  |  | -173.83 | -173.83 | 43.25 | 8.62 | 7.21 |
| 185 | 4.2.3.4.2.1 | Obra falsa | 12d | 2026-07-22 | 2026-08-05 | 183FS-283920h, 174 |  | DESC - Ayudante armado [600%]; DESC - Oficial armado [300%] |  |  | 14.42 | 7.67 | 7.21 |
| 186 | 4.2.3.4.2.2 | Cama | 10d | 2026-07-29 | 2026-08-11 | 185FS-202800h, 175 |  | DESC - Ayudante armado [600%]; DESC - Oficial armado [300%] |  |  | 13.42 | 7.87 | 7.44 |
| 187 | 4.2.3.4.2.3 | Acero | 8d | 2026-08-03 | 2026-08-14 | 186FS-243360h, 176 |  | DESC - Ayudante hierro [1000%]; DESC - Oficial hierro [600%] |  |  | 11.42 | 7.97 | 7.61 |
| 188 | 4.2.3.4.2.4 | Aligerante | 7d | 2026-08-06 | 2026-08-18 | 187FS-283920h, 177 |  | DESC - Ayudante armado [800%]; DESC - Oficial armado [400%] |  |  | 12.42 | 8.1 | 7.7 |
| 189 | 4.2.3.4.2.5 | Concreto | 1d | 2026-08-18 | 2026-08-19 | 188, 178 |  | DESC - Ayudante armado [1000%]; DESC - Oficial armado [400%] |  |  | 1.42 | 8.13 | 8.1 |
| 190 | 4.2.3.4.2.6 | Fraguado | 7d | 2026-08-19 | 2026-08-26 | 189 | DIAS CORRIDOS-100% LABORABLES |  |  |  | 7.42 | 8.36 | 8.13 |
| 191 | 4.2.3.4.2.7 | Desencofrado | 7d | 2026-08-26 | 2026-09-03 | 190, 180 |  | DESC - Ayudante armado [600%]; DESC - Oficial armado [200%] |  |  | 8.42 | 8.62 | 8.36 |
| 192 | 4.2.3.4.2.8 | Equipo de obra falsa | 32d | 2026-07-22 | 2026-09-02 | 185SS |  | DESC - Obra falsa [423900%]; DESC - Cama [78500%] |  |  | 42.42 | 8.59 | 7.21 |
| 193 | 4.2.4 | **Lucarnas** | 32d | 2026-06-09 | 2026-07-18 |  |  |  |  |  | 39.42 | 7.08 | 5.79 |
| 194 | 4.2.4.1 | Módulo 1 | 11d | 2026-06-09 | 2026-06-24 | 156 |  | DESC - Ayudante armado [400%]; DESC - Oficial armado [200%]; DESC - Ayudante hierro [200%]; DESC - Oficial hierro |  |  | 15.42 | 6.29 | 5.79 |
| 195 | 4.2.4.2 | Módulo 2 | 12d | 2026-07-04 | 2026-07-18 | 167, 194 |  | DESC - Ayudante armado [400%]; DESC - Oficial armado [200%]; DESC - Ayudante hierro [200%]; DESC - Oficial hierro |  |  | 14.42 | 7.08 | 6.62 |
| 196 | 4.2.5 | Placa de contrapiso | 84d | 2026-05-08 | 2026-08-29 | 72 |  | DESC - Ayudante armado [800%]; DESC - Oficial armado [300%]; DESC - Ayudante hierro [400%]; DESC - Oficial hierro [200%] |  |  | 113.42 | 8.45 | 4.74 |
| 197 | 4.3 | **ESCALERAS** | 34d | 2026-07-18 | 2026-08-31 |  |  |  | -82.23 | -82.23 | 44.42 | 8.52 | 7.08 |
| 198 | 4.3.1 | **Piso 2** | 22d | 2026-07-18 | 2026-08-15 |  |  |  | -161 | -161 | 28.42 | 8 | 7.08 |
| 199 | 4.3.1.1 | Estructura metálica | 12d | 2026-07-18 | 2026-08-03 | 158FS+20d |  |  |  |  | 16.42 | 7.6 | 7.08 |
| 200 | 4.3.1.2 | Concreto | 9d | 2026-08-03 | 2026-08-15 | 199 |  | DESC - Ayudante armado [300%]; DESC - Oficial armado [200%]; DESC - Ayudante hierro [300%]; DESC - Oficial hierro [200%] |  |  | 12.42 | 8 | 7.6 |
| 201 | 4.3.2 | **Piso 2** | 22d | 2026-08-03 | 2026-08-31 |  |  |  |  |  | 28.42 | 8.52 | 7.6 |
| 202 | 4.3.2.1 | Estructura metálica | 12d | 2026-08-03 | 2026-08-19 | 169, 199 |  |  |  |  | 16.42 | 8.13 | 7.6 |
| 203 | 4.3.2.2 | Concreto | 10d | 2026-08-19 | 2026-08-31 | 202, 200 |  | DESC - Ayudante armado [300%]; DESC - Oficial armado [200%]; DESC - Ayudante hierro [300%]; DESC - Oficial hierro [200%] |  |  | 12.42 | 8.52 | 8.13 |
